# Order Management Redesign

Schedule from Primavera P6, 2010-07-01 to 2011-01-14, data date 2015-07-01, A marks actual dates.
Operations is leading this project to redesign the major order management business processes that relate to international sales.
We made a ton of progress last week. Should be ready for next review meeti
I'd just like to thank the team for their hardwork on this project. It's really been going we

## Calendars

- Corporate - Standard Full Time: Mon-Fri 08:00-15:59; Sat-Sun off. Exceptions (off unless hours are given): 2010-07-05, 2010-09-06, 2010-11-25, 2010-12-24, 2010-12-31.

## Resources

| Resource | Group | Rate |
| --- | --- | --- |
| Rea Johnson | labor | 90 |
| Ben Frost | labor | 95 |
| Judy Billings | labor | 100 |
| Peter Cooper | labor | 100 |
| Michelle Peterson | labor | 85 |
| BPM Consultant 2 | labor | 115 |
| BPM Consultant 1 | labor | 125 |

## Schedule

| ID | WBS | Activity | Type | Duration | Start | Finish | Predecessors | Complete | Resources | Cost | Actual cost | Type of work | Key Milestones | Enterprise Milestones |
| --- | --- | --- | --- | --- | --- | --- | --- | --- | --- | --- | --- | --- | --- | --- |
|  | 0 | **Key Milestones** |  |  | 2010-07-07 | 2011-01-13 |  |  |  |  |  |  |  |  |
| CP9001 |  | Funding Awarded | milestone | 0d | 2010-07-07 A | 2010-07-07 A | CP1000 | 100% |  |  |  | Planned | Key MS | Kickoff |
| CP9002 |  | Gate 1 - Change Review | milestone | 0d | 2010-08-09 A | 2010-08-09 A | CP1040 | 100% |  |  |  | Planned | Key MS |  |
| CP9003 |  | Gate 2 - Design Review | milestone | 0d | 2010-11-02 A | 2010-11-02 A | CP1060 | 100% |  |  |  | Planned | Key MS | Design |
| CP9004 |  | Gate 3 - Implementation Review | milestone | 0d | 2010-12-15 A | 2010-12-15 A | CP1070 | 100% |  |  |  | Planned | Key MS | Build |
| CP9005 |  | Project Complete | milestone | 0d | 2011-01-13 A | 2011-01-13 A | CP1080 | 100% |  |  |  | Planned | Key MS | Complete |
|  | 1 | **Initiation Phase** |  |  | 2010-07-01 | 2010-07-08 |  |  |  |  |  |  |  |  |
| CP1000 |  | Explore opportunity | resource dependent | 5d | 2010-07-01 A | 2010-07-08 A |  | 100% | Rea Johnson [51.14 h]; Ben Frost [5 h]; Judy Billings [204.54 h] | 25,531.76 | 25,531.76 | Planned |  |  |
|  | 2 | **Envisioning Phase** |  |  | 2010-07-08 | 2010-08-09 |  |  |  |  |  |  |  |  |
| CP1010 |  | Define reengineering opportunities | resource dependent | 5d | 2010-07-08 A | 2010-07-14 A | CP9001 | 100% | Judy Billings [90.91 h]; Ben Frost [90.91 h]; Peter Cooper [45.45 h]; Rea Johnson [45.45 h] | 26,363.9 | 26,363.9 | Planned |  |  |
| CP1020 |  | Identify enabling technologies * | resource dependent | 7.5d | 2010-07-15 A | 2010-07-26 A | CP1010 | 100% | Rea Johnson [34.97 h]; Michelle Peterson [69.93 h]; Judy Billings [83.92 h]; BPM Consultant 2 [41.96 h]; Peter Cooper [41.96 h] | 33,003.76 | 33,003.76 | Planned |  |  |
| CP1030 |  | Outline performance goals | resource dependent | 10d | 2010-07-26 A | 2010-08-09 A | CP1020 | 100% | Rea Johnson [56.43 h]; Ben Frost [56.43 h]; Judy Billings [75.24 h]; Michelle Peterson [84.64 h] | 29,456.99 | 29,456.99 | Planned |  |  |
|  | 3 | **Process Diagnosis Phase** |  |  | 2010-08-02 | 2010-09-07 |  |  |  |  |  |  |  |  |
| CP1040 |  | Describe existing processes | resource dependent | 5d | 2010-08-02 A | 2010-08-09 A | CP1030 FS-5d | 100% | Judy Billings [81.82 h]; Ben Frost [81.82 h]; Michelle Peterson [81.82 h]; BPM Consultant 2 [81.82 h]; BPM Consultant 1 [81.82 h] | 42,545.36 | 42,545.36 | Planned |  |  |
| CP1050 |  | Uncover pathologies in existing processes | resource dependent | 20d | 2010-08-09 A | 2010-09-07 A | CP9002 | 100% | Peter Cooper [43.06 h]; Judy Billings [172.25 h]; Rea Johnson [64.59 h]; Ben Frost [64.59 h]; BPM Consultant 2 [64.59 h] | 61,909 | 61,909 | Planned |  |  |
|  | 4 | **Process Redesign Phase** |  |  | 2010-09-07 | 2010-11-02 |  |  |  |  |  |  |  |  |
| CP1060 |  | Design new process | resource dependent | 40d | 2010-09-07 A | 2010-11-02 A | CP1050 | 100% | Judy Billings [225.7 h]; Rea Johnson [28.21 h]; Ben Frost [84.64 h]; Peter Cooper [84.64 h]; Michelle Peterson [112.85 h]; BPM Consultant 2 [56.43 h]; BPM Consultant 1 [225.7 h] | 100,908.9 | 100,908.9 | Planned |  |  |
|  | 5 | **Reconstruction Phase** |  |  | 2010-11-02 | 2010-12-15 |  |  |  |  |  |  |  |  |
| CP1070 |  | Implement process change | resource dependent | 30d | 2010-11-02 A | 2010-12-15 A | CP9003 | 100% | Rea Johnson [24.06 h]; Judy Billings [144.38 h]; Ben Frost [24.06 h]; Peter Cooper [48.13 h]; Michelle Peterson [24.06 h]; BPM Consultant 1 [144.38 h] | 43,796.69 | 43,796.69 | Planned |  |  |
|  | 6 | **Process Monitoring Phase** |  |  | 2010-12-15 | 2011-01-14 |  |  |  |  |  |  |  |  |
| CP1080 |  | Ensure link to continuous improvement | resource dependent | 20d | 2010-12-15 A | 2011-01-14 A | CP9004 | 100% | Rea Johnson [111.57 h]; Judy Billings [223.14 h]; Ben Frost [223.14 h]; Peter Cooper [223.14 h]; Michelle Peterson [223.14 h]; BPM Consultant 1 [223.14 h] | 133,227 | 133,227 | Planned |  |  |

Notes:
- CP1020: Steps: Review reengineering opportunities; Develop requirements list; Analyze COTS technologies for fit; Create short-list of technology vendors; Review demonstrations; Complete RFI process; Select 2 technologies / Expenses: Analyst survey; Industry consultant
- CP1030: Expenses: Travel expenses for requirements meeting; Conference room facitilies
- CP1050: Expenses: Web Design Consultants
- CP1060: Expenses: Sun Server
- CP1080: Expenses: Project Implementation Team Dinner; Legal Review

## Activity codes

| Code | Value | Meaning |
| --- | --- | --- |
| Enterprise Milestones | Build | Build Complete |
| Enterprise Milestones | Complete | Project Completion |
| Enterprise Milestones | Design | Design Complete |
| Enterprise Milestones | Kickoff | Project Kickoff |
| Key Milestones | Key MS | Key Milestones |
| Type of work | Planned | Planned Work |
